# CertiKit ISO22301 Toolkit Version 4R1

Schedule from MS Project, 2015-04-15 to 2017-12-01.

## Calendars

- Standard: Mon-Fri 08:00-12:00, 13:00-17:00; Sat-Sun off.

## Resources

| Resource |
| --- |
| Project Manager |
| Top Management |
| Business Continuity Manager |
| Business Representatives |
| IT Management |
| Internal Audit Team |
| External Auditor |

## Schedule

| ID | Task | Type | Duration | Start | Finish | Predecessors | Resources | Work |
| --- | --- | --- | --- | --- | --- | --- | --- | --- |
| 1 | NOTE: All timescales, dependencies and resources are approximations and will depend on the specifics of your project. | manual | 1d? | 2017-12-01 | 2017-12-01 |  |  |  |
| 2 | Project initiation | manual | 1d | 2015-04-15 | 2015-04-15 |  | Project Manager | 8h |
| 3 | Define proposed scope of BCMS | manual | 1d | 2015-04-16 | 2015-04-16 | 2 | Top Management; Business Continuity Manager | 16h |
| 4 | Perform gap assessment | manual | 3d | 2015-04-17 | 2015-04-21 | 3 | Business Continuity Manager; Business Representatives | 48h |
| 5 | Obtain top management commitment | manual | 1d | 2015-04-22 | 2015-04-22 | 4 | Business Continuity Manager; Project Manager; Top Management | 24h |
| 6 | Establish BCMS document control | manual | 2d | 2015-04-15 | 2015-04-16 |  | Business Continuity Manager; Project Manager | 32h |
| 7 | Define business continuity policy | manual | 3d | 2015-04-23 | 2015-04-27 | 5 | Business Continuity Manager; Top Management | 48h |
| 8 | Document context of the organization | manual | 3d | 2015-04-17 | 2015-04-21 | 6 | Business Continuity Manager; Top Management | 48h |
| 9 | Agree business continuity objectives | manual | 3d | 2015-04-23 | 2015-04-27 | 5 | Business Continuity Manager; Top Management | 48h |
| 10 | Define roles, responsibilities and authorities | manual | 3d | 2015-04-28 | 2015-04-30 | 9 | Business Continuity Manager; Top Management | 48h |
| 11 | Competence and training needs assessment | manual | 3d | 2015-05-01 | 2015-05-05 | 10 | Business Continuity Manager; Business Representatives | 48h |
| 12 | Conduct business impact analysis | manual | 5d | 2015-05-01 | 2015-05-07 | 10 | Business Continuity Manager; Business Representatives; IT Management | 120h |
| 13 | Perform risk assessment | manual | 5d | 2015-05-08 | 2015-05-14 | 12 | Business Continuity Manager; Top Management; IT Management | 120h |
| 14 | Determine business continuity strategies and solutions | manual | 5d | 2015-05-15 | 2015-05-21 | 13 | Business Continuity Manager; Top Management; IT Management | 120h |
| 15 | Establish business continuity plans | manual | 10d | 2015-05-22 | 2015-06-04 | 14 | Business Continuity Manager; Business Representatives; IT Management | 240h |
| 16 | Plan business continuity exercising and testing | manual | 3d | 2015-05-22 | 2015-05-26 | 14 | Business Continuity Manager; IT Management; Top Management | 72h |
| 17 | Document communications procedures | manual | 2d | 2015-05-22 | 2015-05-25 | 14 | Business Continuity Manager; Business Representatives | 32h |
| 18 | Define approach to monitoring, measurement, analysis and evaluation | manual | 2d | 2015-04-28 | 2015-04-29 | 9 | Business Continuity Manager; Top Management | 32h |
| 19 | Awareness training | manual | 3d | 2015-05-22 | 2015-05-26 | 14 | Business Continuity Manager; Business Representatives | 48h |
| 20 | Establish continual improvement process | manual | 2d | 2015-04-30 | 2015-05-01 | 18 | Business Continuity Manager; Top Management | 32h |
| 21 | Internal audit | manual | 5d | 2015-06-05 | 2015-06-11 | 15 | Business Continuity Manager; Business Representatives; IT Management; Internal Audit Team | 160h |
| 22 | Perform management review | manual | 1d | 2015-06-12 | 2015-06-12 | 21 | Business Continuity Manager; Top Management | 16h |
| 23 | Certification stage one | manual | 1d | 2015-06-15 | 2015-06-15 | 22 | Business Continuity Manager; Top Management; External Auditor | 24h |
| 24 | Certification stage two | manual | 3d | 2015-07-14 | 2015-07-16 | 23FS+20d | Business Continuity Manager; Business Representatives; External Auditor; Top Management | 96h |
| 25 | Post Project Review | manual | 1d | 2015-07-17 | 2015-07-17 | 24 | Project Manager; Business Continuity Manager; Top Management | 24h |
